# Gestion de Projet

How a schedule from MS Project changed from version to version. A marks actual dates.

## Version 1 (saved 2012-05-13, file projet_planifie_AKROUR_GAUTIER.mpp)

Note of the change: Ajout du GANT-a

| ID | WBS | Task | Duration | Start | Finish | Predecessors | Complete | Total float | Constraint |
| --- | --- | --- | --- | --- | --- | --- | --- | --- | --- |
| 1 | 1 | **Etude et réflexion** | 9.33d | 2012-03-14 09:00 A | 2012-03-23 18:00 |  | 100% |  |  |
| 2 |  | Rédaction note de cadrage | 0d? | 2012-03-14 09:00 A | 2012-03-23 15:00 A |  | 100% |  | finish no earlier than 2012-03-18 18:00 |
| 3 |  | Rédaction cahier des charges | 0d? | 2012-03-19 09:00 A | 2012-03-24 18:00 A | 2 | 100% |  | finish no earlier than 2012-03-24 18:00 |
| 4 | 2 | **Préparation de l'environement** | 2.33d | 2012-03-26 09:00 A | 2012-03-27 18:00 A |  | 100% |  |  |
| 5 |  | Installation du serveur d'hébergement | 0.67d? | 2012-03-26 09:00 A | 2012-03-26 18:00 A | 3 | 100% |  | finish no earlier than 2012-03-26 18:00 |
| 6 |  | Installation système bases de données | 0.67d? | 2012-03-27 09:00 A | 2012-03-27 18:00 A | 5 | 100% |  | finish no earlier than 2012-03-27 18:00 |
| 7 | 3 | **Conception** | 9.33d | 2012-03-28 09:00 A | 2012-04-06 18:00 |  | 98% |  |  |
| 8 |  | Réalisation schéma base de données | 8.83d? | 2012-03-28 09:00 A | 2012-04-06 18:00 A | 6 | 100% |  | finish no earlier than 2012-04-06 18:00 |
| 9 |  | Réflexion sur QCM | 8.83d? | 2012-03-28 09:00 A | 2012-04-06 15:00 A | 6 | 100% |  | start no earlier than 2012-03-28 09:00 |
| 10 |  | Définition arborescence site | 9.33d? | 2012-03-28 09:00 A | 2012-04-06 18:00 A | 6 | 100% |  | start no earlier than 2012-03-28 09:00 |
| 11 |  | Réflexion sur charte graphique | 8.83d? | 2012-03-28 09:00 A | 2012-04-06 15:00 A | 6 | 100% |  | start no earlier than 2012-03-28 09:00 |
| 12 |  | Etablissement structure page Web type | 0d? | 2012-04-02 09:00 A | 2012-04-06 15:00 A | 11 | 100% |  | start no earlier than 2012-04-02 09:00 |
| 13 |  | Redaction du dossier de conception | 0.67d? | 2012-03-28 09:00 A | 2012-03-28 15:00 A |  | 100% |  |  |
| 14 |  | Validation du MCD | 0.67d | 2012-04-26 09:00 A | 2012-04-26 15:00 A |  | 100% |  | start no earlier than 2012-04-26 09:00 |
| 15 |  | Réalisation diagramme séquence | 0.33d? | 2012-05-11 09:00 A | 2012-05-16 12:00 |  |  | -11d | finish no earlier than 2012-05-07 15:00 |
| 16 |  | Traduction du diagramme de séquence en fichiers | 0.33d? | 2012-05-11 09:00 A | 2012-05-16 16:00 | 15 |  | -34.83d |  |
| 17 |  | Rédaction cahier de tests | 0.17d? | 2012-05-16 16:00 | 2012-05-16 17:00 | 16 |  | -34.83d |  |
| 18 | 4 | **Développement** | 35d | 2012-04-25 09:00 | 2012-06-05 18:00 | 11 |  |  |  |
| 19 | 4.1 | **module connexion** | 5.5d? | 2012-05-11 09:00 A | 2012-05-17 16:00 |  |  | 4.16d |  |
| 20 |  | création de la base de donnée | 0.17d? | 2012-05-11 09:00 A | 2012-05-16 11:00 | 14 |  | 0.83d |  |
| 21 |  | requête sql module connexion | 0.08d? | 2012-05-16 11:00 | 2012-05-16 11:30 | 20 |  | 0.83d |  |
| 22 |  | développement php | 0.17d? | 2012-05-16 16:00 | 2012-05-16 17:00 | 16 |  | 0.24d |  |
| 23 |  | design | 1d? | 2012-05-16 17:00 | 2012-05-17 16:00 | 17 |  | 4.16d |  |
| 24 |  | tests | 0.08d? | 2012-05-16 17:00 | 2012-05-16 17:30 | 22, 21, 20 |  | 5.08d |  |
| 25 | 4.2 | **module étudiant** | 5.85d? | 2012-05-23 10:00 | 2012-05-30 10:06 |  |  | 0.16d |  |
| 26 |  | requête sql | 0.37d? | 2012-05-23 10:00 | 2012-05-23 14:13 | 19 |  | 0.16d |  |
| 27 |  | développement php | 0.56d? | 2012-05-23 14:13 | 2012-05-23 17:33 | 26 |  | 0.16d |  |
| 28 |  | développement javascript | 0.56d? | 2012-05-23 10:00 | 2012-05-23 15:20 | 19 |  | 0.6d |  |
| 29 |  | design | 0.37d? | 2012-05-23 10:00 | 2012-05-23 14:13 | 19 |  | 0.79d |  |
| 30 |  | tests | 0.09d? | 2012-05-23 17:33 | 2012-05-30 10:06 | 29, 28, 27, 26 |  | 0.23d |  |
| 31 | 4.3 | **module administrateur** | 0.77d? | 2012-05-30 10:00 | 2012-05-30 16:36 |  |  | 0.09d |  |
| 32 |  | requête sql | 0.19d? | 2012-05-30 10:00 | 2012-05-30 11:06 | 27 |  | 0.09d | start no earlier than 2012-05-30 09:00 |
| 33 |  | développement php | 0.28d? | 2012-05-30 11:20 | 2012-05-30 15:00 | 32 |  | 0.05d | finish no earlier than 2012-05-30 15:00 |
| 34 |  | développement javascript | 0.67d? | 2012-05-30 10:06 | 2012-05-30 16:06 | 25 |  | 0.23d |  |
| 35 |  | design | 0.28d? | 2012-05-30 10:06 | 2012-05-30 11:46 | 25 |  | 0.62d |  |
| 36 |  | tests | 0.08d? | 2012-05-30 16:06 | 2012-05-30 16:36 | 35, 34, 33, 32 |  | 0.23d |  |
| 37 | 4.4 | **module enseignant** | 0.45d? | 2012-05-30 15:00 | 2012-05-30 17:42 |  |  | 0.05d |  |
| 38 |  | requête sql | 0.17d? | 2012-05-30 15:00 | 2012-05-30 16:00 | 33 |  | 0.05d |  |
| 39 |  | développement php | 0.25d? | 2012-05-30 16:00 | 2012-05-30 17:30 | 38 |  | 0.05d |  |
| 40 |  | développement javascript | 0.25d? | 2012-05-30 15:00 | 2012-05-30 16:30 | 33 |  | 0.08d |  |
| 41 |  | design | 0.17d? | 2012-05-30 16:30 | 2012-05-30 17:30 | 40 |  | 0.08d |  |
| 42 |  | tests | 0.03d? | 2012-05-30 17:30 | 2012-05-30 17:42 | 40, 39, 38 |  | 0.05d |  |
| 43 | 5 | **Rédaction des livrables et préparation de la présentation** | 34.5d | 2012-04-25 09:00 | 2012-06-05 15:00 |  |  |  |  |
| 44 |  | rédaction du manuel d'utilisation | 11h | 2012-05-16 17:30 | 2012-05-30 16:30 | 24 |  | 0.25d |  |
| 45 |  | préparation de la présentation du logiciel | 10h | 2012-05-16 17:30 | 2012-05-30 15:30 | 24 |  | 0.42d | start no earlier than 2012-05-05 09:00 |
| 46 |  | soutenance | 0d | 2012-05-29 09:00 | 2012-05-29 09:00 |  |  | 7d | start no earlier than 2012-05-29 09:00 |

## Version 2 (saved 2012-05-13, file projet_planifie_AKROUR_GAUTIER.mpp)

Note of the change: modification fenetre ouvertes

Last finish stays 2012-06-05.

Changed:

| ID | Task | Start | Finish | Duration | Total float | Other |
| --- | --- | --- | --- | --- | --- | --- |
| 40 | développement javascript |  | 2012-05-30 16:30 → 2012-05-30 16:40 | 0.25d? → 0.28d? | 0.08d → 0.06d | resources Philippe Gautier → Philippe Gautier [90%] |
| 41 | design | 2012-05-30 16:30 → 2012-05-30 16:40 | 2012-05-30 17:30 → 2012-05-30 17:40 |  | 0.08d → 0.06d |  |

## Version 3 (saved 2012-05-16, file projet_planifie_AKROUR_GAUTIER.mpp)

Note of the change: suivit de projet

Last finish stays 2012-06-05. Complete tasks 11 → 12.

Changed:

| ID | Task | Start | Finish | Duration | Complete | Total float | Predecessors |
| --- | --- | --- | --- | --- | --- | --- | --- |
| 2 | Rédaction note de cadrage |  | 2012-03-23 15:00 A → 2012-04-23 10:00 A (+31d) |  |  |  |  |
| 3 | Rédaction cahier des charges |  | 2012-03-24 18:00 A → 2012-03-19 09:00 A (-5d) |  |  |  |  |
| 4 | **Préparation de l'environement** |  | 2012-03-27 18:00 A → 2012-03-27 18:00 |  |  |  |  |
| 5 | Installation du serveur d'hébergement |  | 2012-03-26 18:00 A → 2012-03-26 15:00 A |  |  |  |  |
| 6 | Installation système bases de données |  | 2012-03-27 18:00 A → 2012-03-27 15:00 A |  |  |  |  |
| 8 | Réalisation schéma base de données |  | 2012-04-06 18:00 A → 2012-04-06 15:00 A |  |  |  |  |
| 12 | Etablissement structure page Web type |  | 2012-04-06 15:00 A → 2012-04-02 09:00 A (-4d) |  |  |  |  |
| 15 | Réalisation diagramme séquence |  | 2012-05-16 12:00 → 2012-05-14 10:00 (-2d) |  |  |  |  |
| 16 | Traduction du diagramme de séquence en fichiers |  | 2012-05-16 16:00 → 2012-05-14 12:00 (-2d) |  |  | -34.83d → -31.83d |  |
| 17 | Rédaction cahier de tests | 2012-05-16 16:00 → 2012-05-14 12:00 (-2d) | 2012-05-16 17:00 → 2012-05-14 13:00 (-2d) |  |  | -34.83d → -30.83d |  |
| 18 | **Développement** |  |  |  | 0% → 3% |  |  |
| 19 | **module connexion** |  | 2012-05-17 16:00 → 2012-05-15 11:00 (-2d) | 5.5d? → 2.67d? | 0% → 11% | 4.16d → 11.37d |  |
| 20 | création de la base de donnée |  | 2012-05-16 11:00 → 2012-05-11 10:00 A (-5d) |  | 0% → 100% | 0.83d → none |  |
| 21 | requête sql module connexion | 2012-05-16 11:00 → 2012-05-14 09:00 (-2d) | 2012-05-16 11:30 → 2012-05-14 09:30 (-2d) |  |  | 0.83d → 12.08d |  |
| 22 | développement php | 2012-05-16 16:00 → 2012-05-14 12:00 (-2d) | 2012-05-16 17:00 → 2012-05-14 13:00 (-2d) |  |  | 0.24d → 11.62d |  |
| 23 | design | 2012-05-16 17:00 → 2012-05-14 14:00 (-2d) | 2012-05-17 16:00 → 2012-05-15 11:00 (-2d) |  |  | 4.16d → 11.37d |  |
| 24 | tests | 2012-05-16 17:00 → 2012-05-15 09:00 (-1d) | 2012-05-16 17:30 → 2012-05-15 09:30 (-1d) |  |  | 5.08d → 11d |  |
| 25 | **module étudiant** | 2012-05-23 10:00 → 2012-05-15 11:00 (-8d) | 2012-05-30 10:06 → 2012-05-21 11:06 (-9d) | 5.85d? → 4.69d? |  | 0.16d → 11.37d |  |
| 26 | requête sql | 2012-05-23 10:00 → 2012-05-15 11:00 (-8d) | 2012-05-23 14:13 → 2012-05-17 09:13 (-6d) |  |  | 0.16d → 9.7d |  |
| 27 | développement php | 2012-05-23 14:13 → 2012-05-17 09:13 (-6d) | 2012-05-23 17:33 → 2012-05-21 10:33 (-2d) |  |  | 0.16d → 9.7d |  |
| 28 | développement javascript | 2012-05-23 10:00 → 2012-05-15 11:00 (-8d) | 2012-05-23 15:20 → 2012-05-18 09:20 (-5d) |  |  | 0.6d → 11.74d |  |
| 29 | design | 2012-05-23 10:00 → 2012-05-15 11:00 (-8d) | 2012-05-23 14:13 → 2012-05-17 09:13 (-6d) |  |  | 0.79d → 12.59d |  |
| 30 | tests | 2012-05-23 17:33 → 2012-05-21 10:33 (-2d) | 2012-05-30 10:06 → 2012-05-21 11:06 (-9d) |  |  | 0.23d → 10.37d |  |
| 31 | **module administrateur** | 2012-05-30 10:00 → 2012-05-21 11:06 (-9d) | 2012-05-30 16:36 → 2012-06-04 09:16 (+5d) | 0.77d? → 11.36d? |  | 0.09d → 1.62d |  |
| 32 | requête sql | 2012-05-30 10:00 → 2012-05-30 09:00 | 2012-05-30 11:06 → 2012-05-31 09:06 (+1d) |  |  | 0.09d → 2.75d | 27 → 30, 27 |
| 33 | développement php | 2012-05-30 11:20 → 2012-05-31 09:06 (+1d) | 2012-05-30 15:00 → 2012-06-01 09:46 (+2d) |  |  | 0.05d → 2.25d |  |
| 34 | développement javascript | 2012-05-30 10:06 → 2012-05-21 11:06 (-9d) | 2012-05-30 16:06 → 2012-05-22 11:06 (-8d) |  |  | 0.23d → 11.37d |  |
| 35 | design | 2012-05-30 10:06 → 2012-05-21 11:06 (-9d) | 2012-05-30 11:46 → 2012-05-21 12:46 (-9d) |  |  | 0.62d → 12.62d |  |
| 36 | tests | 2012-05-30 16:06 → 2012-06-01 09:46 (+2d) | 2012-05-30 16:36 → 2012-06-04 09:16 (+5d) |  |  | 0.23d → 1.62d |  |
| 37 | **module enseignant** | 2012-05-30 15:00 → 2012-05-22 11:06 (-8d) | 2012-05-30 17:42 → 2012-06-04 11:28 (+5d) | 0.45d? → 10.56d? |  | 0.05d → 1.25d |  |
| 38 | requête sql | 2012-05-30 15:00 → 2012-06-01 09:46 (+2d) | 2012-05-30 16:00 → 2012-06-04 09:46 (+5d) |  |  | 0.05d → 1.25d |  |
| 39 | développement php | 2012-05-30 16:00 → 2012-06-04 09:46 (+5d) | 2012-05-30 17:30 → 2012-06-04 11:16 (+5d) |  |  | 0.05d → 1.25d |  |
| 40 | développement javascript | 2012-05-30 15:00 → 2012-05-22 11:06 (-8d) | 2012-05-30 16:40 → 2012-05-23 09:46 (-7d) |  |  | 0.06d → 10.7d | 33 → 34, 33 |
| 41 | design | 2012-05-30 16:40 → 2012-05-23 09:46 (-7d) | 2012-05-30 17:40 → 2012-05-24 09:46 (-6d) |  |  | 0.06d → 9.7d |  |
| 42 | tests | 2012-05-30 17:30 → 2012-06-04 11:16 (+5d) | 2012-05-30 17:42 → 2012-06-04 11:28 (+5d) |  |  | 0.05d → 1.25d |  |
| 44 | rédaction du manuel d'utilisation | 2012-05-16 17:30 → 2012-05-15 09:30 (-1d) | 2012-05-30 16:30 → 2012-05-22 10:30 (-8d) |  |  | 0.25d → 11.92d |  |
| 45 | préparation de la présentation du logiciel | 2012-05-16 17:30 → 2012-05-15 09:30 (-1d) | 2012-05-30 15:30 → 2012-05-22 09:30 (-8d) |  |  | 0.42d → 12.08d |  |

## Version 4 (saved 2012-05-24, file projet_planifie_AKROUR_GAUTIER.mpp)

Note of the change: Mise a jour dossier planification

Last finish stays 2012-06-05. Complete tasks 12 → 16.

Changed:

| ID | Task | Start | Finish | Duration | Complete | Total float | Predecessors | Other |
| --- | --- | --- | --- | --- | --- | --- | --- | --- |
| 2 | Rédaction note de cadrage |  | 2012-04-23 10:00 A → 2012-03-27 10:00 A (-27d) |  |  |  |  |  |
| 15 | Réalisation diagramme séquence |  | 2012-05-14 10:00 → 2012-05-12 09:00 (-2d) |  |  |  |  |  |
| 16 | Traduction du diagramme de séquence en fichiers |  | 2012-05-14 12:00 → 2012-05-12 11:00 (-2d) |  |  | -31.83d → -31.33d |  |  |
| 17 | Rédaction cahier de tests | 2012-05-14 12:00 → 2012-05-12 11:00 (-2d) | 2012-05-14 13:00 → 2012-05-12 12:00 (-2d) |  |  | -30.83d → -30.33d |  |  |
| 18 | **Développement** |  |  |  | 3% → 46% |  |  |  |
| 19 | **module connexion** |  |  |  | 11% → 83% | 11.37d → 4.33d |  |  |
| 21 | requête sql module connexion | 2012-05-14 09:00 A | 2012-05-14 09:30 A |  | 0% → 100% | 12.08d → none |  |  |
| 22 | développement php | 2012-05-14 12:00 → 2012-05-12 11:00 (-2d) | 2012-05-14 13:00 → 2012-05-12 12:00 (-2d) |  |  | 11.62d → 5.83d |  |  |
| 23 | design | 2012-05-14 14:00 A | 2012-05-15 11:00 A |  | 0% → 100% | 11.37d → none |  |  |
| 24 | tests | 2012-05-15 09:00 → 2012-05-14 09:30 (-1d) | 2012-05-15 09:30 → 2012-05-14 10:00 (-1d) |  |  | 11d → 5.67d |  |  |
| 25 | **module étudiant** | 2012-05-15 11:00 A | 2012-05-21 11:06 → 2012-05-26 09:53 (+5d) | 4.69d? → 10.17d? | 0% → 38% | 11.37d → -5.48d |  |  |
| 26 | requête sql | 2012-05-15 11:00 A | 2012-05-17 09:13 A |  | 0% → 100% | 9.7d → none |  |  |
| 27 | développement php | 2012-05-17 09:13 → 2012-05-24 09:00 (+7d) | 2012-05-21 10:33 → 2012-05-26 09:20 (+5d) |  |  | 9.7d → -5.57d |  | constraint none → start no earlier than 2012-05-24 08:00 |
| 28 | développement javascript | 2012-05-15 11:00 → 2012-05-24 09:00 (+9d) | 2012-05-18 09:20 → 2012-05-26 09:20 (+8d) |  |  | 11.74d → -5.57d |  | constraint none → start no earlier than 2012-05-24 08:00 |
| 29 | design | 2012-05-15 11:00 A | 2012-05-17 09:13 A |  | 0% → 100% | 12.59d → none |  |  |
| 30 | tests | 2012-05-21 10:33 → 2012-05-26 09:20 (+5d) | 2012-05-21 11:06 → 2012-05-26 09:53 (+5d) |  |  | 10.37d → -5.57d |  | constraint none → start no earlier than 2012-05-24 08:00 |
| 31 | **module administrateur** |  | 2012-06-04 09:16 → 2012-05-21 11:06 (-14d) | 11.36d? → 0d |  | 1.62d → none |  |  |
| 32 | requête sql |  | 2012-05-31 09:06 → 2012-05-30 09:00 (-1d) | 0.19d? → 0d? |  | 2.75d → -7.81d |  |  |
| 33 | développement php | 2012-05-31 09:06 → 2012-05-30 15:00 (-1d) | 2012-06-01 09:46 → 2012-05-30 15:00 (-2d) | 0.28d? → 0d? |  | 2.25d → -8.48d |  |  |
| 34 | développement javascript | 2012-05-21 11:06 → 2012-05-26 09:53 (+5d) | 2012-05-22 11:06 → 2012-05-26 09:53 (+4d) | 0.67d? → 0d? |  | 11.37d → -5.48d |  | constraint none → start no earlier than 2012-05-24 08:00 |
| 35 | design | 2012-05-21 11:06 → 2012-05-26 09:53 (+5d) | 2012-05-21 12:46 → 2012-05-26 09:53 (+5d) | 0.28d? → 0d? |  | 12.62d → -5.48d |  | constraint none → start no earlier than 2012-05-24 08:00 |
| 36 | tests | 2012-06-01 09:46 → 2012-05-30 15:00 (-2d) | 2012-06-04 09:16 → 2012-05-30 15:00 (-5d) | 0.08d? → 0d? |  | 1.62d → -8.48d |  |  |
| 37 | **module enseignant** | 2012-05-22 11:06 → 2012-05-24 09:00 (+2d) | 2012-06-04 11:28 → 2012-05-26 13:33 (-9d) | 10.56d? → 2.33d? |  | 1.25d → 7.5d |  |  |
| 38 | requête sql | 2012-06-01 09:46 → 2012-05-24 09:00 (-8d) | 2012-06-04 09:46 → 2012-05-24 10:00 (-11d) |  |  | 1.25d → 9.63d | 33 → 26, 33 | constraint none → start no earlier than 2012-05-24 08:00 |
| 39 | développement php | 2012-06-04 09:46 → 2012-05-26 09:20 (-9d) | 2012-06-04 11:16 → 2012-05-26 10:50 (-9d) |  |  | 1.25d → 7.22d | 38 → 27, 38 | constraint none → start no earlier than 2012-05-24 08:00 |
| 40 | développement javascript | 2012-05-22 11:06 → 2012-05-26 09:53 (+4d) | 2012-05-23 09:46 → 2012-05-26 11:33 (+3d) |  |  | 10.7d → 7.06d | 34, 33 → 30, 34, 33 | constraint none → start no earlier than 2012-05-24 08:00 |
| 41 | design | 2012-05-23 09:46 → 2012-05-26 11:33 (+3d) | 2012-05-24 09:46 → 2012-05-26 13:33 (+2d) |  |  | 9.7d → 7.33d |  | constraint none → start no earlier than 2012-05-24 08:00 |
| 42 | tests | 2012-06-04 11:16 → 2012-05-26 11:33 (-9d) | 2012-06-04 11:28 → 2012-05-26 11:45 (-9d) |  |  | 1.25d → 7.47d |  | constraint none → start no earlier than 2012-05-24 08:00 |
| 43 | **Rédaction des livrables et préparation de la présentation** |  |  |  | 0% → 38% |  |  |  |
| 44 | rédaction du manuel d'utilisation | 2012-05-15 09:30 → 2012-05-24 09:00 A (+9d) | 2012-05-22 10:30 → 2012-05-26 18:00 (+4d) |  | 0% → 50% | 11.92d → 7.5d |  | constraint none → start no earlier than 2012-05-24 08:00 |
| 45 | préparation de la présentation du logiciel | 2012-05-15 09:30 → 2012-05-24 09:00 A (+9d) | 2012-05-22 09:30 → 2012-05-26 17:00 (+4d) |  | 0% → 25% | 12.08d → 7.5d |  | constraint start no earlier than 2012-05-05 09:00 → start no earlier than 2012-05-24 08:00 |

## Version 5 (saved 2012-05-24, file projet_planifie_AKROUR_GAUTIERsuivi16.05.mpp)

Note of the change: Mise a jour dossier planification

Last finish stays 2012-06-05. Complete tasks 16 → 12.

Changed:

| ID | Task | Start | Finish | Duration | Complete | Total float | Predecessors | Other |
| --- | --- | --- | --- | --- | --- | --- | --- | --- |
| 1 | **Etude et réflexion** | 2012-03-14 09:00 A → 2012-03-14 A | 2012-03-23 18:00 → 2012-03-23 |  |  |  |  |  |
| 2 | Rédaction note de cadrage | 2012-03-14 09:00 A → 2012-03-14 A | 2012-03-27 10:00 A → 2012-04-23 A (+27d) |  |  |  |  | constraint finish no earlier than 2012-03-18 18:00 → finish no earlier than 2012-03-18 |
| 3 | Rédaction cahier des charges | 2012-03-19 09:00 A → 2012-03-19 A | 2012-03-19 09:00 A → 2012-03-19 A |  |  |  |  | constraint finish no earlier than 2012-03-24 18:00 → finish no earlier than 2012-03-24 |
| 4 | **Préparation de l'environement** | 2012-03-26 09:00 A → 2012-03-26 A | 2012-03-27 18:00 → 2012-03-27 A |  |  |  |  |  |
| 5 | Installation du serveur d'hébergement | 2012-03-26 09:00 A → 2012-03-26 A | 2012-03-26 15:00 A → 2012-03-26 A |  |  |  |  | constraint finish no earlier than 2012-03-26 18:00 → finish no earlier than 2012-03-26 |
| 6 | Installation système bases de données | 2012-03-27 09:00 A → 2012-03-27 A | 2012-03-27 15:00 A → 2012-03-27 A |  |  |  |  | constraint finish no earlier than 2012-03-27 18:00 → finish no earlier than 2012-03-27 |
| 7 | **Conception** | 2012-03-28 09:00 A → 2012-03-28 A | 2012-04-06 18:00 → 2012-04-06 |  | 98% → 99% |  |  | baseline start 2012-05-09 10:00 → 2012-05-09; baseline finish 2012-05-09 15:00 → 2012-05-09 |
| 8 | Réalisation schéma base de données | 2012-03-28 09:00 A → 2012-03-28 A | 2012-04-06 15:00 A → 2012-04-06 A |  |  |  |  | constraint finish no earlier than 2012-04-06 18:00 → finish no earlier than 2012-04-06 |
| 9 | Réflexion sur QCM | 2012-03-28 09:00 A → 2012-03-28 A | 2012-04-06 15:00 A → 2012-04-06 A |  |  |  |  | constraint start no earlier than 2012-03-28 09:00 → start no earlier than 2012-03-28 |
| 10 | Définition arborescence site | 2012-03-28 09:00 A → 2012-03-28 A | 2012-04-06 18:00 A → 2012-04-06 A |  |  |  |  | constraint start no earlier than 2012-03-28 09:00 → start no earlier than 2012-03-28 |
| 11 | Réflexion sur charte graphique | 2012-03-28 09:00 A → 2012-03-28 A | 2012-04-06 15:00 A → 2012-04-06 A |  |  |  |  | constraint start no earlier than 2012-03-28 09:00 → start no earlier than 2012-03-28 |
| 12 | Etablissement structure page Web type | 2012-04-02 09:00 A → 2012-04-02 A | 2012-04-02 09:00 A → 2012-04-02 A |  |  |  |  | constraint start no earlier than 2012-04-02 09:00 → start no earlier than 2012-04-02 |
| 13 | Redaction du dossier de conception | 2012-03-28 09:00 A → 2012-03-28 A | 2012-03-28 15:00 A → 2012-03-28 A |  |  |  |  |  |
| 14 | Validation du MCD | 2012-04-26 09:00 A → 2012-04-26 A | 2012-04-26 15:00 A → 2012-04-26 A |  |  |  |  | constraint start no earlier than 2012-04-26 09:00 → start no earlier than 2012-04-26 |
| 15 | Réalisation diagramme séquence | 2012-05-11 09:00 A → 2012-05-11 A | 2012-05-12 09:00 → 2012-05-14 (+2d) |  | 0% → 50% | 0d → 0.17d |  | constraint finish no earlier than 2012-05-07 15:00 → finish no earlier than 2012-05-07 |
| 16 | Traduction du diagramme de séquence en fichiers | 2012-05-11 09:00 A → 2012-05-11 A | 2012-05-12 11:00 → 2012-05-14 (+2d) |  | 0% → 50% | -31.33d → -31.83d |  | baseline start 2012-05-09 10:00 → 2012-05-09; baseline finish 2012-05-09 12:00 → 2012-05-09 |
| 17 | Rédaction cahier de tests | 2012-05-12 11:00 → 2012-05-14 (+2d) | 2012-05-12 12:00 → 2012-05-14 (+2d) |  |  | -30.33d → -30.83d |  | baseline start 2012-05-09 14:00 → 2012-05-09; baseline finish 2012-05-09 15:00 → 2012-05-09 |
| 18 | **Développement** | 2012-04-25 09:00 → 2012-04-25 | 2012-06-05 18:00 → 2012-06-05 |  | 46% → 8% |  |  | baseline start 2012-05-02 10:00 → 2012-05-02; baseline finish 2012-05-30 17:42 → 2012-05-30 |
| 19 | **module connexion** | 2012-05-11 09:00 A → 2012-05-11 A | 2012-05-15 11:00 → 2012-05-18 (+3d) | 2.67d? → 5.92d? | 83% → 21% | 4.33d → 8.35d |  | baseline start 2012-05-02 10:00 → 2012-05-02; baseline finish 2012-05-10 12:00 → 2012-05-10 |
| 20 | création de la base de donnée | 2012-05-11 09:00 A → 2012-05-11 A | 2012-05-11 10:00 A → 2012-05-11 A |  |  |  |  | baseline start 2012-05-02 10:00 → 2012-05-02; baseline finish 2012-05-02 11:00 → 2012-05-02 |
| 21 | requête sql module connexion | 2012-05-14 09:00 A → 2012-05-14 | 2012-05-14 09:30 A → 2012-05-14 |  | 100% → 0% | none → 12.93d |  | baseline start 2012-05-02 11:00 → 2012-05-02; baseline finish 2012-05-02 11:30 → 2012-05-02 |
| 22 | développement php | 2012-05-12 11:00 → 2012-05-14 A (+2d) | 2012-05-12 12:00 → 2012-05-17 (+5d) | 0.17d? → 1d? | 0% → 33% | 5.83d → 9.35d |  | baseline start 2012-05-09 14:00 → 2012-05-09; baseline finish 2012-05-09 15:00 → 2012-05-09 |
| 23 | design | 2012-05-14 14:00 A → 2012-05-14 | 2012-05-15 11:00 A → 2012-05-15 |  | 100% → 0% | none → 11.6d |  | baseline start 2012-05-09 15:00 → 2012-05-09; baseline finish 2012-05-10 12:00 → 2012-05-10 |
| 24 | tests | 2012-05-14 09:30 → 2012-05-18 (+4d) | 2012-05-14 10:00 → 2012-05-18 (+4d) |  |  | 5.67d → 8.35d |  | baseline start 2012-05-09 15:00 → 2012-05-09; baseline finish 2012-05-09 15:30 → 2012-05-09 |
| 25 | **module étudiant** | 2012-05-15 11:00 A → 2012-05-18 (+3d) | 2012-05-26 09:53 → 2012-05-22 (-4d) | 10.17d? → 2.7d? | 38% → 0% | -5.48d → 8.35d |  | baseline start 2012-05-16 10:00 → 2012-05-16; baseline finish 2012-05-23 10:06 → 2012-05-23 |
| 26 | requête sql | 2012-05-15 11:00 A → 2012-05-18 (+3d) | 2012-05-17 09:13 A → 2012-05-21 (+4d) |  | 100% → 0% | none → 8.53d |  | baseline start 2012-05-16 10:00 → 2012-05-16; baseline finish 2012-05-16 14:13 → 2012-05-16 |
| 27 | développement php | 2012-05-24 09:00 → 2012-05-21 (-3d) | 2012-05-26 09:20 → 2012-05-22 (-4d) |  |  | -5.57d → 9.2d |  | constraint start no earlier than 2012-05-24 08:00 → none; baseline start 2012-05-16 14:13 → 2012-05-16; baseline finish 2012-05-16 17:33 → 2012-05-16 |
| 28 | développement javascript | 2012-05-24 09:00 → 2012-05-18 (-6d) | 2012-05-26 09:20 → 2012-05-21 (-5d) |  |  | -5.57d → 10.57d |  | constraint start no earlier than 2012-05-24 08:00 → none; baseline start 2012-05-16 10:00 → 2012-05-16; baseline finish 2012-05-16 15:20 → 2012-05-16 |
| 29 | design | 2012-05-15 11:00 A → 2012-05-18 (+3d) | 2012-05-17 09:13 A → 2012-05-22 (+5d) | 0.37d? → 1.11d? | 100% → 0% | none → 8.35d |  | baseline start 2012-05-16 10:00 → 2012-05-16; baseline finish 2012-05-16 14:13 → 2012-05-16 |
| 30 | tests | 2012-05-26 09:20 → 2012-05-22 (-4d) | 2012-05-26 09:53 → 2012-05-22 (-4d) |  |  | -5.57d → 10.51d |  | constraint start no earlier than 2012-05-24 08:00 → none; baseline start 2012-05-16 17:33 → 2012-05-16; baseline finish 2012-05-23 10:06 → 2012-05-23 |
| 31 | **module administrateur** | 2012-05-21 11:06 → 2012-05-22 (+1d) | 2012-05-21 11:06 → 2012-05-30 (+9d) | 0d → 7.21d? |  | none → 5.17d |  | baseline start 2012-05-23 10:06 → 2012-05-23; baseline finish 2012-05-30 15:30 → 2012-05-30 |
| 32 | requête sql | 2012-05-30 09:00 → 2012-05-30 | 2012-05-30 09:00 → 2012-05-30 |  |  | -7.81d → 5.83d |  | constraint start no earlier than 2012-05-30 09:00 → start no earlier than 2012-05-30; baseline start 2012-05-30 10:00 → 2012-05-30; baseline finish 2012-05-30 11:06 → 2012-05-30 |
| 33 | développement php | 2012-05-30 15:00 → 2012-05-30 | 2012-05-30 15:00 → 2012-05-30 |  |  | -8.48d → 5.17d |  | constraint finish no earlier than 2012-05-30 15:00 → finish no earlier than 2012-05-30; baseline start 2012-05-30 11:20 → 2012-05-30; baseline finish 2012-05-30 15:00 → 2012-05-30 |
| 34 | développement javascript | 2012-05-26 09:53 → 2012-05-22 (-4d) | 2012-05-26 09:53 → 2012-05-22 (-4d) |  |  | -5.48d → 12.38d |  | constraint start no earlier than 2012-05-24 08:00 → none; baseline start 2012-05-23 10:06 → 2012-05-23; baseline finish 2012-05-23 16:06 → 2012-05-23 |
| 35 | design | 2012-05-26 09:53 → 2012-05-22 (-4d) | 2012-05-26 09:53 → 2012-05-22 (-4d) |  |  | -5.48d → 12.38d |  | constraint start no earlier than 2012-05-24 08:00 → none; baseline start 2012-05-23 10:06 → 2012-05-23; baseline finish 2012-05-23 11:46 → 2012-05-23 |
| 36 | tests | 2012-05-30 15:00 → 2012-05-30 | 2012-05-30 15:00 → 2012-05-30 |  |  | -8.48d → 5.17d |  | baseline start 2012-05-30 15:00 → 2012-05-30; baseline finish 2012-05-30 15:30 → 2012-05-30 |
| 37 | **module enseignant** | 2012-05-24 09:00 → 2012-05-21 (-3d) | 2012-05-26 13:33 → 2012-05-28 (+2d) | 2.33d? → 5.51d? |  | 7.5d → 7.35d |  | baseline start 2012-05-30 15:00 → 2012-05-30; baseline finish 2012-05-30 17:42 → 2012-05-30 |
| 38 | requête sql | 2012-05-24 09:00 → 2012-05-22 (-2d) | 2012-05-24 10:00 → 2012-05-23 (-1d) |  |  | 9.63d → 9.71d | 26, 33 → 25, 33 | constraint start no earlier than 2012-05-24 08:00 → none; baseline start 2012-05-30 15:00 → 2012-05-30; baseline finish 2012-05-30 16:00 → 2012-05-30 |
| 39 | développement php | 2012-05-26 09:20 → 2012-05-23 (-3d) | 2012-05-26 10:50 → 2012-05-28 (+2d) | 0.25d? → 0.5d? |  | 7.22d → 7.35d | 27, 38 → 38 | constraint start no earlier than 2012-05-24 08:00 → none; resources Sofian Akrour → Sofian Akrour; Philippe Gautier [50%]; baseline start 2012-05-30 16:00 → 2012-05-30; baseline finish 2012-05-30 17:30 → 2012-05-30 |
| 40 | développement javascript | 2012-05-26 09:53 → 2012-05-21 (-5d) | 2012-05-26 11:33 → 2012-05-22 (-4d) |  |  | 7.06d → 11.92d | 30, 34, 33 → 28, 34, 33 | constraint start no earlier than 2012-05-24 08:00 → none; baseline start 2012-05-30 15:00 → 2012-05-30; baseline finish 2012-05-30 16:30 → 2012-05-30 |
| 41 | design | 2012-05-26 11:33 → 2012-05-22 (-4d) | 2012-05-26 13:33 → 2012-05-22 (-4d) |  |  | 7.33d → 11.92d |  | constraint start no earlier than 2012-05-24 08:00 → none; baseline start 2012-05-30 16:30 → 2012-05-30; baseline finish 2012-05-30 17:30 → 2012-05-30 |
| 42 | tests | 2012-05-26 11:33 → 2012-05-28 (+2d) | 2012-05-26 11:45 → 2012-05-28 (+2d) |  |  | 7.47d → 7.35d |  | constraint start no earlier than 2012-05-24 08:00 → none; resources Sofian Akrour → Philippe Gautier; baseline start 2012-05-30 17:30 → 2012-05-30; baseline finish 2012-05-30 17:42 → 2012-05-30 |
| 43 | **Rédaction des livrables et préparation de la présentation** | 2012-04-25 09:00 → 2012-04-25 | 2012-06-05 15:00 → 2012-06-05 |  | 38% → 0% |  |  | baseline start 2012-04-25 09:00 → 2012-04-25; baseline finish 2012-06-05 15:00 → 2012-06-05 |
| 44 | rédaction du manuel d'utilisation | 2012-05-24 09:00 A → 2012-05-18 (-6d) | 2012-05-26 18:00 → 2012-05-28 (+2d) |  | 50% → 0% | 7.5d → 7.42d |  | constraint start no earlier than 2012-05-24 08:00 → none; baseline start 2012-05-09 15:30 → 2012-05-09; baseline finish 2012-05-23 14:30 → 2012-05-23 |
| 45 | préparation de la présentation du logiciel | 2012-05-24 09:00 A → 2012-05-18 (-6d) | 2012-05-26 17:00 → 2012-05-25 (-1d) |  | 25% → 0% | 7.5d → 8.58d |  | constraint start no earlier than 2012-05-24 08:00 → start no earlier than 2012-05-05; baseline start 2012-05-09 15:30 → 2012-05-09; baseline finish 2012-05-23 11:30 → 2012-05-23 |
| 46 | soutenance | 2012-05-29 09:00 → 2012-05-30 (+1d) | 2012-05-29 09:00 → 2012-05-30 (+1d) |  |  | 7d → 5.83d |  | constraint start no earlier than 2012-05-29 09:00 → start no earlier than 2012-05-30; baseline start 2012-05-29 09:00 → 2012-05-29; baseline finish 2012-05-29 09:00 → 2012-05-29 |

## Version 6 (saved 2012-05-24, file projet_planifie_AKROUR_GAUTIERsuivi_24.05.mpp)

Note of the change: Merge branch 'master' of github.com:Novatouch/stri-quiz

Last finish stays 2012-06-05. Complete tasks 12 → 15.

Changed:

| ID | Task | Start | Finish | Duration | Complete | Total float |
| --- | --- | --- | --- | --- | --- | --- |
| 18 | **Développement** |  |  |  | 8% → 57% |  |
| 19 | **module connexion** |  |  |  | 21% → 71% | 8.35d → 8.42d |
| 21 | requête sql module connexion | 2012-05-14 A | 2012-05-14 A |  | 0% → 100% | 12.93d → none |
| 23 | design | 2012-05-14 A | 2012-05-15 A | 1d? → 1.25d? | 0% → 100% | 11.6d → none |
| 25 | **module étudiant** | 2012-05-18 A |  |  | 0% → 68% | 8.35d → 10.51d |
| 26 | requête sql | 2012-05-18 A |  | 0.37d? → 0.22d? | 0% → 83% | 8.53d → 11.53d |
| 27 | développement php | 2012-05-21 A |  | 0.56d? → 0.74d? | 0% → 25% | 9.2d → 10.66d |
| 28 | développement javascript | 2012-05-18 A |  |  | 0% → 67% | 10.57d → 11.57d |
| 29 | design | 2012-05-18 A | 2012-05-22 A |  | 0% → 100% | 8.35d → none |

## Version 7 (saved 2012-05-30, file projet_planifie_AKROUR_GAUTIERsuivi_30.05.mpp)

Note of the change: Merge branch 'master' of github.com:Novatouch/stri-quiz

Last finish stays 2012-06-05. Complete tasks 15 → 20.

Changed:

| ID | Task | Start | Finish | Duration | Complete | Total float |
| --- | --- | --- | --- | --- | --- | --- |
| 18 | **Développement** |  |  |  | 57% → 99% |  |
| 19 | **module connexion** |  | 2012-05-18 A |  | 71% → 100% | 8.42d → none |
| 20 | création de la base de donnée |  | 2012-05-11 A → 2012-05-14 A (+3d) | 0.17d? → 0.67d? |  |  |
| 22 | développement php |  | 2012-05-17 A |  | 33% → 100% | 9.42d → none |
| 24 | tests | 2012-05-18 A | 2012-05-18 A |  | 0% → 100% | 8.42d → none |
| 25 | **module étudiant** |  | 2012-05-22 → 2012-05-28 (+6d) | 2.7d? → 7.42d? | 68% → 98% | 10.51d → 7d |
| 26 | requête sql |  | 2012-05-21 A | 0.22d? → 0.56d? | 83% → 100% | 11.53d → none |
| 27 | développement php |  | 2012-05-22 → 2012-05-23 (+1d) | 0.74d? → 0.93d? | 25% → 90% | 10.66d → 10.95d |
| 28 | développement javascript |  | 2012-05-21 → 2012-05-28 A (+7d) | 0.56d? → 2.22d? | 67% → 100% | 11.57d → none |
| 30 | tests | 2012-05-22 → 2012-05-28 A (+6d) | 2012-05-22 → 2012-05-28 A (+6d) | 0.09d? → 0.18d? | 0% → 100% | 10.51d → none |
| 31 | **module administrateur** | 2012-05-22 → 2012-05-28 (+6d) |  | 7.21d? → 2.5d? |  |  |
| 34 | développement javascript | 2012-05-22 → 2012-05-28 (+6d) | 2012-05-22 → 2012-05-28 (+6d) |  |  | 12.38d → 7.67d |
| 35 | design | 2012-05-22 → 2012-05-28 (+6d) | 2012-05-22 → 2012-05-28 (+6d) |  |  | 12.38d → 7.67d |
| 37 | **module enseignant** | 2012-05-21 → 2012-05-28 (+7d) | 2012-05-28 → 2012-05-31 (+3d) | 5.51d? → 3.05d? |  | 7.35d → 3.98d |
| 38 | requête sql | 2012-05-22 → 2012-05-28 (+6d) | 2012-05-23 → 2012-05-29 (+6d) |  |  | 9.71d → 5.01d |
| 39 | développement php | 2012-05-23 → 2012-05-29 (+6d) | 2012-05-28 → 2012-05-30 (+2d) |  |  | 7.35d → 4.98d |
| 40 | développement javascript | 2012-05-21 → 2012-05-28 (+7d) | 2012-05-22 → 2012-05-29 (+7d) |  |  | 11.92d → 6.08d |
| 41 | design | 2012-05-22 → 2012-05-29 (+7d) | 2012-05-22 → 2012-05-29 (+7d) |  |  | 11.92d → 6.08d |
| 42 | tests | 2012-05-28 → 2012-05-30 (+2d) | 2012-05-28 → 2012-05-31 (+3d) |  |  | 7.35d → 3.98d |
